# Bouwplanning v1.0

Schedule from an IFC model, 2027-03-01 to 2028-06-27.
Woonwijk 60 Woningen Almere

## Schedule

| ID | Activity | Type | Duration | Start | Finish | Predecessors | Planned start | Planned finish | Total float | Free float |
| --- | --- | --- | --- | --- | --- | --- | --- | --- | --- | --- |
| 1 | **1. Bouwrijp maken** |  | 5d | 2027-03-01 | 2027-04-26 |  | 2027-03-01 | 2027-03-05 | 0d |  |
| 1.1 | Terrein ontruimen en egaliseren |  | 8d | 2027-03-01 | 2027-03-10 |  |  |  | 0d |  |
| 1.2 | Hoofdriolering aanleggen |  | 12d | 2027-03-11 | 2027-03-30 | 1.1 | 2027-03-01 | 2027-03-16 | 281d | 0d |
| 1.3 | Nutsvoorzieningen hoofdleiding |  | 10d | 2027-03-31 | 2027-04-13 | 1.2 | 2027-03-01 | 2027-03-12 | 281d | 0d |
| 1.4 | Bouwwegen aanleggen |  | 8d | 2027-04-14 | 2027-04-23 | 1.3 | 2027-03-01 | 2027-03-10 | 281d | 0d |
| 1.5 | Start bouw | milestone | 0d | 2027-04-26 | 2027-04-26 | 1.4 | 2027-03-01 | 2027-03-01 | 281d |  |
| 2 | **2. Fundering Fase 1 (blok 1-3)** |  | 5d | 2027-03-30 | 2027-05-27 |  | 2027-03-01 | 2027-03-05 | 0d |  |
| 2.1 | Heien blok 1 (10 rijwoningen) |  | 8d | 2027-03-30 | 2027-04-08 | 1.1 SS+19d | 2027-03-01 | 2027-03-10 | 0d |  |
| 2.2 | Heien blok 2 (10 rijwoningen) |  | 8d | 2027-04-09 | 2027-04-20 | 2.1 | 2027-03-01 | 2027-03-10 | 262d | 0d |
| 2.3 | Heien blok 3 (10 rijwoningen) |  | 8d | 2027-04-14 | 2027-04-23 | 2.2 SS+3d | 2027-03-01 | 2027-03-10 | 262d | 0d |
| 2.4 | Funderingsbalken blok 1-3 |  | 10d | 2027-04-26 | 2027-05-12 | 2.3 | 2027-03-01 | 2027-03-12 | 262d | 0d |
| 2.5 | Begane grondvloer blok 1-3 |  | 10d | 2027-05-13 | 2027-05-27 | 2.4 | 2027-03-01 | 2027-03-12 | 262d |  |
| 3 | **3. Fundering Fase 2 (blok 4-5)** |  | 5d | 2027-04-02 | 2027-05-13 |  | 2027-03-01 | 2027-03-05 | 0d |  |
| 3.1 | Heien blok 4 (10 rijwoningen) |  | 8d | 2027-04-02 | 2027-04-13 | 2.1 SS | 2027-03-01 | 2027-03-10 | 0d |  |
| 3.2 | Heien blok 5 (10 2-1-kap) |  | 8d | 2027-04-07 | 2027-04-16 | 3.1 SS+3d | 2027-03-01 | 2027-03-10 | 0d |  |
| 3.3 | Funderingsbalken blok 4-5 |  | 8d | 2027-04-19 | 2027-04-29 | 3.2 | 2027-03-01 | 2027-03-10 | 0d |  |
| 3.4 | Begane grondvloer blok 4-5 |  | 8d | 2027-04-30 | 2027-05-13 | 3.3 | 2027-03-01 | 2027-03-10 | 0d |  |
| 4 | **4. Ruwbouw Fase 1** |  | 5d | 2027-05-04 | 2027-08-23 |  | 2027-03-01 | 2027-03-05 | 0d |  |
| 4.1 | Metselwerk BG blok 1-3 |  | 15d | 2027-05-04 | 2027-05-27 | 3.4 FS-6d | 2027-03-01 | 2027-03-19 | 0d |  |
| 4.2 | Verdiepingsvloer blok 1-3 |  | 10d | 2027-05-28 | 2027-06-10 | 4.1 | 2027-03-01 | 2027-03-12 | 0d |  |
| 4.3 | Metselwerk verdieping blok 1-3 |  | 15d | 2027-06-11 | 2027-07-01 | 4.2 | 2027-03-01 | 2027-03-19 | 0d |  |
| 4.4 | Kapconstructie blok 1-3 |  | 12d | 2027-07-02 | 2027-07-19 | 4.3 | 2027-03-01 | 2027-03-16 | 0d |  |
| 4.5 | Dakpannen blok 1-3 |  | 10d | 2027-07-20 | 2027-08-23 | 4.4 | 2027-03-01 | 2027-03-12 | 0d |  |
| 4.6 | Hoogste punt fase 1 | milestone | 0d | 2027-08-23 | 2027-08-23 | 4.5 | 2027-03-01 | 2027-03-01 | 215d |  |

| ID | Activity | Type | Duration | Start | Finish | Predecessors | Planned start | Planned finish | Total float | Free float |
| --- | --- | --- | --- | --- | --- | --- | --- | --- | --- | --- |
| 5 | **5. Ruwbouw Fase 2** |  | 5d | 2027-08-24 | 2027-11-04 |  | 2027-03-01 | 2027-03-05 | 0d |  |
| 5.1 | Metselwerk BG blok 4-5 |  | 15d | 2027-08-24 | 2027-09-13 | 4.5 | 2027-03-01 | 2027-03-19 | 0d |  |
| 5.2 | Verdiepingsvloer blok 4-5 |  | 8d | 2027-09-14 | 2027-09-23 | 5.1 | 2027-03-01 | 2027-03-10 | 160d | 0d |
| 5.3 | Metselwerk verdieping blok 4-5 |  | 12d | 2027-09-24 | 2027-10-11 | 5.2 | 2027-03-01 | 2027-03-16 | 160d | 0d |
| 5.4 | Kapconstructie blok 4-5 |  | 10d | 2027-10-12 | 2027-10-25 | 5.3 | 2027-03-01 | 2027-03-12 | 160d | 0d |
| 5.5 | Dakpannen blok 4-5 |  | 8d | 2027-10-26 | 2027-11-04 | 5.4 | 2027-03-01 | 2027-03-10 | 160d | 0d |
| 5.6 | Hoogste punt fase 2 | milestone | 0d | 2027-11-04 | 2027-11-04 | 5.5 | 2027-03-01 | 2027-03-01 | 162d |  |
| 6 | **6. Gevels & Daken** |  | 5d | 2027-09-30 | 2027-11-22 |  | 2027-03-01 | 2027-03-05 | 0d |  |
| 6.1 | Kozijnen blok 1-3 |  | 10d | 2027-09-30 | 2027-10-13 | 5.1 SS+27d | 2027-03-01 | 2027-03-12 | 0d |  |
| 6.2 | Kozijnen blok 4-5 |  | 8d | 2027-10-14 | 2027-10-25 | 6.1 | 2027-03-01 | 2027-03-10 | 150d | 0d |
| 6.3 | Geveldichting en isolatie |  | 12d | 2027-10-26 | 2027-11-10 | 6.2 | 2027-03-01 | 2027-03-16 | 150d | 0d |
| 6.4 | Dakgoten en HWA |  | 8d | 2027-11-11 | 2027-11-22 | 6.3, 5.5 FF+2d | 2027-03-01 | 2027-03-10 | 150d | 0d |
| 6.5 | Wind- en waterdicht alle blokken | milestone | 0d | 2027-11-22 | 2027-11-22 | 6.4 | 2027-03-01 | 2027-03-01 | 150d |  |
| 7 | **7. Installaties** |  | 5d | 2027-10-06 | 2027-12-22 |  | 2027-03-01 | 2027-03-05 | 0d |  |
| 7.1 | Elektra blok 1-3 |  | 12d | 2027-10-06 | 2027-10-21 | 6.1 SS | 2027-03-01 | 2027-03-16 | 0d |  |
| 7.2 | Elektra blok 4-5 |  | 8d | 2027-10-13 | 2027-10-22 | 7.1 SS+5d | 2027-03-01 | 2027-03-10 | 0d |  |
| 7.3 | Loodgieter blok 1-3 |  | 10d | 2027-10-25 | 2027-11-05 | 7.2 | 2027-03-01 | 2027-03-12 | 0d |  |
| 7.4 | Loodgieter blok 4-5 |  | 8d | 2027-11-08 | 2027-11-17 | 7.3 | 2027-03-01 | 2027-03-10 | 0d |  |
| 7.5 | Warmtepompen alle woningen |  | 15d | 2027-11-18 | 2027-12-08 | 7.4 | 2027-03-01 | 2027-03-19 | 0d |  |
| 7.6 | Ventilatie WTW units |  | 10d | 2027-12-09 | 2027-12-22 | 7.5 | 2027-03-01 | 2027-03-12 | 0d |  |
| 8 | **8. Afbouw Fase 1** |  | 5d | 2027-12-06 | 2028-02-14 |  | 2027-03-01 | 2027-03-05 | 0d |  |
| 8.1 | Stucwerk blok 1-3 |  | 15d | 2027-12-06 | 2027-12-24 | 7.6 FS-13d | 2027-03-01 | 2027-03-19 | 0d |  |
| 8.2 | Tegelwerk blok 1-3 |  | 10d | 2027-12-27 | 2028-01-07 | 8.1 | 2027-03-01 | 2027-03-12 | 0d |  |
| 8.3 | Keukens blok 1-3 |  | 8d | 2028-01-10 | 2028-01-19 | 8.2 | 2027-03-01 | 2027-03-10 | 0d |  |
| 8.4 | Schilderwerk blok 1-3 |  | 10d | 2028-01-20 | 2028-02-02 | 8.3 | 2027-03-01 | 2027-03-12 | 0d |  |
| 8.5 | Vloerafwerking blok 1-3 |  | 8d | 2028-02-03 | 2028-02-14 | 8.4 | 2027-03-01 | 2027-03-10 | 0d |  |

| ID | Activity | Type | Duration | Start | Finish | Predecessors | Planned start | Planned finish | Total float | Free float |
| --- | --- | --- | --- | --- | --- | --- | --- | --- | --- | --- |
| 9 | **9. Afbouw Fase 2** |  | 5d | 2028-02-15 | 2028-04-06 |  | 2027-03-01 | 2027-03-05 | 0d |  |
| 9.1 | Stucwerk blok 4-5 |  | 12d | 2028-02-15 | 2028-03-01 | 8.5 | 2027-03-01 | 2027-03-16 | 0d |  |
| 9.2 | Tegelwerk blok 4-5 |  | 8d | 2028-03-02 | 2028-03-13 | 9.1 | 2027-03-01 | 2027-03-10 | 52d | 0d |
| 9.3 | Keukens blok 4-5 |  | 5d | 2028-03-14 | 2028-03-20 | 9.2 | 2027-03-01 | 2027-03-05 | 52d | 0d |
| 9.4 | Schilderwerk blok 4-5 |  | 8d | 2028-03-21 | 2028-03-30 | 9.3 | 2027-03-01 | 2027-03-10 | 52d | 0d |
| 9.5 | Vloerafwerking blok 4-5 |  | 5d | 2028-03-31 | 2028-04-06 | 9.4 | 2027-03-01 | 2027-03-05 | 52d |  |
| 10 | **10. Woonrijp maken** |  | 5d | 2028-03-13 | 2028-05-29 |  | 2027-03-01 | 2027-03-05 | 0d |  |
| 10.1 | Definitieve riolering aansluiten |  | 8d | 2028-03-13 | 2028-03-22 | 9.1 SS+19d | 2027-03-01 | 2027-03-10 | 0d |  |
| 10.2 | Straatwerk en trottoirs |  | 15d | 2028-03-23 | 2028-04-12 | 10.1 | 2027-03-01 | 2027-03-19 | 0d |  |
| 10.3 | Parkeerplaatsen aanleggen |  | 8d | 2028-04-13 | 2028-04-26 | 10.2 | 2027-03-01 | 2027-03-10 | 0d |  |
| 10.4 | Groenvoorziening en bomen |  | 10d | 2028-04-28 | 2028-05-12 | 10.3 | 2027-03-01 | 2027-03-12 | 0d |  |
| 10.5 | Speelvoorzieningen |  | 5d | 2028-05-15 | 2028-05-19 | 10.4 | 2027-03-01 | 2027-03-05 | 0d |  |
| 10.6 | Straatverlichting |  | 5d | 2028-05-22 | 2028-05-29 | 10.5 | 2027-03-01 | 2027-03-05 | 0d |  |
| 11 | **11. Oplevering** |  | 5d | 2028-05-30 | 2028-06-27 |  | 2027-03-01 | 2027-03-05 | 0d |  |
| 11.1 | Vooroplevering fase 1 |  | 5d | 2028-05-30 | 2028-06-06 | 10.6 | 2027-03-01 | 2027-03-05 | 0d |  |
| 11.2 | Vooroplevering fase 2 |  | 5d | 2028-06-07 | 2028-06-13 | 11.1 | 2027-03-01 | 2027-03-05 | 0d |  |
| 11.3 | Oplevering woningen |  | 10d | 2028-06-14 | 2028-06-27 | 11.2 | 2027-03-01 | 2027-03-12 | 0d |  |
| 11.4 | Woonwijk gereed | milestone | 0d | 2028-06-27 | 2028-06-27 | 11.3 | 2027-03-01 | 2027-03-01 | 0d |  |
